# АСОСЗ ПСО

Schedule from MS Project, 2025-01-13 to 2025-10-31, costs in р..
Автоматизированная система отслеживания статуса заявки поисково-спасательного отряда
Поисково-спасательный отряд "Пропал Человек"

## Calendars

- Стандартный: Mon-Fri 09:00-13:00, 14:00-18:00; Sat-Sun off. Exceptions (off unless hours are given): 2025-05-01 (Первое мая), 2025-05-08 to 2025-05-09 (День Победы).
- Гибкий график волонтера: Mon-Tue 13:00-15:00, 16:00-18:00; Wed-Fri 09:00-13:00, 14:00-18:00; Sat-Sun off. Exceptions (off unless hours are given): 2025-04-14 to 2025-04-28 09:00-13:00, 14:00-16:00 (Сокращенный день, recurring), 2025-05-01 (Первое мая), 2025-05-08 to 2025-05-09 (День Победы).

## Resources

| Resource | Group | Unit | Rate |
| --- | --- | --- | --- |
| Разработчик мобильного приложения | Нанятые сотрудники |  | 1500 |
| Разработчик веб-приложения | Нанятые сотрудники |  | 1500 |
| Дизайнер UI/UX мобильного приложения | Нанятые сотрудники |  | 625 |
| Дизайнер UI/UX веб-приложения | Нанятые сотрудники |  | 625 |
| Тестировщик мобильного приложения | Нанятые сотрудники |  | 1063 |
| Тестировщик веб-приложения | Нанятые сотрудники |  | 1063 |
| Руководитель проекта | Волонтер |  |  |
| Бизнес-аналитик | Волонтер |  |  |
| Системный администратор волонтер | Волонтер |  |  |
| Волонтер-консультант по правовым вопросам | Волонтер |  |  |
| Серверы для приложения и базы данных | Полная цена | шт. | 112500 |
| Лицензии на ПО | Полная цена | шт. | 30000 |
| Лицензии IDE и среды разработки | Полная цена | шт. | 50000 |
| Инструменты тестирования | Бесплатные материалы | шт. |  |
| Канцелярский набор (бумага, 2 ручки) | Бесплатные материалы | шт. |  |
| Аренда помещения | Скидочная группа |  |  |
| Коммунальные услуги | Скидочная группа |  |  |
| Обучение волонтеров | Бесплатные материалы |  |  |
| Рабочая станция | Скидочная группа |  |  |

## Schedule

| ID | WBS | Task | Duration | Start | Finish | Predecessors | Total slack | Free slack | Constraint | Calendar | Resources | Work | Cost |
| --- | --- | --- | --- | --- | --- | --- | --- | --- | --- | --- | --- | --- | --- |
| 1 | 1 | **Инициация проекта** | 57.38d | 2025-01-13 | 2025-04-02 |  | 2.5d | 0d |  |  |  | 56h | 550,000 |
| 2 | 1.1 | Определение целей и задач проекта по созданию АСОСЗ ПСО | 3.25d | 2025-01-13 | 2025-01-15 |  | 2.5d | 0d |  |  | Бизнес-аналитик; Волонтер-консультант по правовым вопросам; Руководитель проекта; Канцелярский набор (бумага, 2 ручки) [1 шт.]; Лицензии IDE и среды разработки [2 шт.]; Лицензии на ПО [5 шт.] | 48h | 250,000 |
| 3 | 1.2 | Формирование команды проекта создания АСОСЗ ПСО | 1d | 2025-01-15 | 2025-04-02 | 2 | 2.62d | 0d |  |  | Руководитель проекта; Канцелярский набор (бумага, 2 ручки) [1 шт.]; Лицензии на ПО; Рабочая станция [0.1%] | 8h | 300,000 |
| 4 | 2 | **Сбор и анализ требований для АСОСЗ ПСО** | 27.25d | 2025-04-02 | 2025-05-14 | 1 | 2.62d | 0d |  |  |  | 296h | 620,000 |
| 5 | 2.1 | Проведение интервью и опросов с волонтерами и возможными заявителями, а также с людьми, когда-либо обращавшихся в ПСО | 7d | 2025-04-02 | 2025-04-14 | 3 | 2.62d | 0d | start no later than 2025-04-07 |  | Бизнес-аналитик; Канцелярский набор (бумага, 2 ручки) [1 шт.]; Лицензии на ПО; Рабочая станция [0.1%] | 56h |  |
| 6 | 2.2 | Документирование функциональных и нефункциональных требований – создание технического задания для АСОСЗ ПСО | 15d | 2025-04-14 | 2025-05-14 | 5 | 16.38d | 0d |  | Гибкий график волонтера | Бизнес-аналитик; Волонтер-консультант по правовым вопросам; Аренда помещения [0.1%]; Канцелярский набор (бумага, 2 ручки) [1 шт.]; Коммунальные услуги [0.1%]; Лицензии на ПО; Рабочая станция [0.1%] | 240h | 620,000 |
| 7 | 3 | **Проектирование системы АСОСЗ ПСО** | 8d | 2025-05-14 | 2025-05-26 | 4 | 20.38d | 0d |  |  |  | 152h | 122,000 |
| 8 | 3.1 | Создание архитектуры АСОСЗ ПСО | 3d | 2025-05-14 | 2025-05-19 | 6 | 20.38d | 0d |  |  | Разработчик веб-приложения; Разработчик мобильного приложения; Системный администратор волонтер; Аренда помещения [0.1%]; Канцелярский набор (бумага, 2 ручки) [1 шт.]; Коммунальные услуги [0.1%]; Лицензии на ПО; Рабочая станция [0.1%] | 72h | 72,000 |
| 9 | 3.2 | Разработка пользовательских интерфейсов (UI/UX) АСОСЗ ПСО | 5d | 2025-05-19 | 2025-05-26 | 8 | 20.38d | 0d |  |  | Дизайнер UI/UX веб-приложения; Дизайнер UI/UX мобильного приложения; Аренда помещения [0.1%]; Канцелярский набор (бумага, 2 ручки) [1 шт.]; Коммунальные услуги [0.1%]; Лицензии IDE и среды разработки; Лицензии на ПО; Рабочая станция [0.1%] | 80h | 50,000 |
| 10 | 4 | **Разработка АСОСЗ ПСО** | 25d | 2025-05-26 | 2025-06-30 | 7 | 20.38d | 0d |  |  |  | 360h | 765,000 |
| 11 | 4.1 | Создание Интернет-приложения АСОСЗ ПСО | 20d | 2025-05-26 | 2025-06-23 | 9 | 20.38d | 0d |  |  | Разработчик веб-приложения; Аренда помещения [0.1%]; Канцелярский набор (бумага, 2 ручки) [1 шт.]; Коммунальные услуги [0.1%]; Лицензии IDE и среды разработки; Лицензии на ПО; Рабочая станция [0.1%]; Серверы для приложения и базы данных [1 шт.] | 160h | 352,500 |
| 12 | 4.2 | Создание мобильного приложения АСОСЗ ПСО | 25d | 2025-05-26 | 2025-06-30 | 11SS | 20.38d | 0d |  |  | Разработчик мобильного приложения; Аренда помещения [0.1%]; Канцелярский набор (бумага, 2 ручки) [1 шт.]; Коммунальные услуги [0.1%]; Лицензии IDE и среды разработки; Лицензии на ПО; Рабочая станция [0.1%]; Серверы для приложения и базы данных [1 шт.] | 200h | 412,500 |
| 13 | 5 | **Тестирование АСОСЗ ПСО** | 19.5d | 2025-06-30 | 2025-07-28 | 10 | 20.38d | 0d |  |  |  | 360h | 385,040 |
| 14 | 5.1 | Проведение функционального тестирования АСОСЗ ПСО | 8d | 2025-06-30 | 2025-07-10 | 11, 12 | 20.38d | 0d |  |  | Системный администратор волонтер [25%]; Тестировщик веб-приложения [50%]; Тестировщик мобильного приложения [50%]; Аренда помещения [0.1%]; Канцелярский набор (бумага, 2 ручки) [1 шт.]; Коммунальные услуги [0.1%]; Лицензии на ПО; Рабочая станция [0.1%]; Серверы для приложения и базы данных; Инструменты тестирования [2 шт.] | 48h | 34,016 |
| 15 | 5.2 | Проведение нагрузочного тестирования АСОСЗ ПСО | 8.57d | 2025-07-10 | 2025-07-23 | 14 | 23.3d | 1d |  |  | Системный администратор волонтер [35%]; Тестировщик веб-приложения [50%]; Тестировщик мобильного приложения [50%]; Аренда помещения [0.1%]; Инструменты тестирования [1 шт.]; Канцелярский набор (бумага, 2 ручки) [1 шт.]; Коммунальные услуги [0.1%]; Лицензии на ПО; Рабочая станция [0.1%]; Серверы для приложения и базы данных | 72h | 51,024 |
| 16 | 5.3 | Исправление выявленных ошибок АСОСЗ ПСО | 12.5d | 2025-07-09 | 2025-07-28 | 15SS-2d, 14FS-1d | 20.38d | 0d |  |  | Системный администратор волонтер [40%]; Разработчик веб-приложения; Разработчик мобильного приложения; Аренда помещения [0.1%]; Канцелярский набор (бумага, 2 ручки) [1 шт.]; Коммунальные услуги [0.1%]; Лицензии IDE и среды разработки; Лицензии на ПО; Рабочая станция [0.1%]; Серверы для приложения и базы данных | 240h | 300,000 |
| 17 | 6 | **Внедрение АСОСЗ ПСО** | 35d | 2025-07-28 | 2025-09-15 | 13 | 20.38d | 0d |  |  |  | 124.8h | 115,200 |
| 18 | 6.1 | Подготовка инфраструктуры для развертывания АСОСЗ ПСО | 20d | 2025-07-28 | 2025-08-25 | 14, 15, 16 | 20.38d | 0d |  |  | Разработчик веб-приложения [10%]; Разработчик мобильного приложения [10%]; Системный администратор волонтер [80%]; Аренда помещения [0.1%]; Канцелярский набор (бумага, 2 ручки); Коммунальные услуги [0.1%]; Лицензии на ПО; Рабочая станция [0.1%]; Серверы для приложения и базы данных | 48h | 48,000 |
| 19 | 6.2 | Развертывание системы в рабочей среде волонтерской организации | 5d | 2025-08-25 | 2025-09-01 | 18 | 20.38d | 0d |  |  | Разработчик веб-приложения [70%]; Разработчик мобильного приложения [70%]; Системный администратор волонтер [20%]; Аренда помещения [0.1%]; Канцелярский набор (бумага, 2 ручки) [1 шт.]; Коммунальные услуги [0.1%]; Лицензии IDE и среды разработки; Лицензии на ПО; Рабочая станция [0.1%]; Серверы для приложения и базы данных | 24h | 24,000 |
| 20 | 6.3 | Проведение обучающих семинаров для волонтеров и создание обучающих пособий для заявителей | 15d | 2025-08-25 | 2025-09-15 | 19SS | 20.38d |  |  |  | Разработчик веб-приложения [20%]; Руководитель проекта; Разработчик мобильного приложения [20%]; Аренда помещения [0.1%]; Канцелярский набор (бумага, 2 ручки) [1 шт.]; Коммунальные услуги [0.1%]; Лицензии на ПО; Обучение волонтеров [0.1%]; Рабочая станция [0.1%]; Серверы для приложения и базы данных | 52.8h | 43,200 |
| 21 | 7 | **Поддержка и мониторинг АСОСЗ ПСО** | 29.88d | 2025-09-15 | 2025-10-24 | 17 | 0.5d | 0d |  |  |  | 120h | 24,000 |
| 22 | 7.1 | Запуск АСОСЗ ПСО в эксплуатацию | 10d | 2025-09-15 | 2025-09-29 | 19 | 20.38d |  |  |  | Разработчик веб-приложения [10%]; Разработчик мобильного приложения [10%]; Системный администратор волонтер [50%]; Канцелярский набор (бумага, 2 ручки) [1 шт.]; Лицензии IDE и среды разработки; Лицензии на ПО; Рабочая станция [0.1%]; Серверы для приложения и базы данных | 24h | 24,000 |
| 23 | 7.2 | **Мониторинг работы АСОСЗ ПСО и сбор отзывов от пользователей** | 26d | 2025-09-19 | 2025-10-24 |  | 0.5d |  |  |  |  | 96h |  |
| 24 | 7.2.1 | Мониторинг работы АСОСЗ ПСО и сбор отзывов от пользователей 1 | 1d | 2025-09-19 | 2025-09-19 |  | 25d |  | start no earlier than 2025-09-19 |  | Бизнес-аналитик; Системный администратор волонтер; Аренда помещения [0.1%]; Канцелярский набор (бумага, 2 ручки) [1 шт.]; Коммунальные услуги [0.1%]; Лицензии на ПО; Рабочая станция [0.1%]; Серверы для приложения и базы данных | 16h |  |
| 25 | 7.2.2 | Мониторинг работы АСОСЗ ПСО и сбор отзывов от пользователей 2 | 1d | 2025-09-26 | 2025-09-26 |  | 20d |  | start no earlier than 2025-09-26 |  | Бизнес-аналитик; Системный администратор волонтер; Аренда помещения [0.1%]; Канцелярский набор (бумага, 2 ручки) [1 шт.]; Коммунальные услуги [0.1%]; Лицензии на ПО; Рабочая станция [0.1%]; Серверы для приложения и базы данных | 16h |  |
| 26 | 7.2.3 | Мониторинг работы АСОСЗ ПСО и сбор отзывов от пользователей 3 | 1d | 2025-10-03 | 2025-10-03 |  | 15d |  | start no earlier than 2025-10-03 |  | Бизнес-аналитик; Системный администратор волонтер; Аренда помещения [0.1%]; Канцелярский набор (бумага, 2 ручки) [1 шт.]; Коммунальные услуги [0.1%]; Лицензии на ПО; Рабочая станция [0.1%]; Серверы для приложения и базы данных | 16h |  |
| 27 | 7.2.4 | Мониторинг работы АСОСЗ ПСО и сбор отзывов от пользователей 4 | 1d | 2025-10-10 | 2025-10-10 |  | 10d |  | start no earlier than 2025-10-10 |  | Бизнес-аналитик; Системный администратор волонтер; Аренда помещения [0.1%]; Канцелярский набор (бумага, 2 ручки) [1 шт.]; Коммунальные услуги [0.1%]; Лицензии на ПО; Рабочая станция [0.1%]; Серверы для приложения и базы данных | 16h |  |
| 28 | 7.2.5 | Мониторинг работы АСОСЗ ПСО и сбор отзывов от пользователей 5 | 1d | 2025-10-17 | 2025-10-17 |  | 5d |  | start no earlier than 2025-10-17 |  | Бизнес-аналитик; Системный администратор волонтер; Аренда помещения [0.1%]; Канцелярский набор (бумага, 2 ручки); Коммунальные услуги [0.1%]; Лицензии на ПО; Рабочая станция [0.1%]; Серверы для приложения и базы данных | 16h |  |
| 29 | 7.2.6 | Мониторинг работы АСОСЗ ПСО и сбор отзывов от пользователей 6 | 1d | 2025-10-24 | 2025-10-24 |  | 0d |  | start no earlier than 2025-10-24 |  | Бизнес-аналитик; Системный администратор волонтер; Аренда помещения [0.1%]; Канцелярский набор (бумага, 2 ручки) [1 шт.]; Коммунальные услуги [0.1%]; Лицензии на ПО; Рабочая станция [0.1%]; Серверы для приложения и базы данных | 16h |  |

Notes:
- 3: Происходит закупка рабочих станций. В дальнейшем затраты на рабочии станции будут равны 0, но сами РС будут упоминаться.
- 6: Оплата за аренду помещения происходит на пол года.

| ID | WBS | Task | Duration | Start | Finish | Predecessors | Total slack | Calendar | Resources | Work |
| --- | --- | --- | --- | --- | --- | --- | --- | --- | --- | --- |
| 30 | 8 | **Закрытие проекта создания АСОСЗ ПСО** | 5d | 2025-10-24 | 2025-10-31 | 21 | 0d |  |  | 48h |
| 31 | 8.1 | Подготовка итогового отчета по проекту создания АСОСЗ ПСО | 3d | 2025-10-24 | 2025-10-30 |  | 0d |  | Бизнес-аналитик; Аренда помещения [0.1%]; Канцелярский набор (бумага, 2 ручки) [1 шт.]; Коммунальные услуги [0.1%]; Лицензии на ПО; Рабочая станция [0.1%]; Серверы для приложения и базы данных | 24h |
| 32 | 8.2 | Оценка достижения целей проекта и результатов работы волонтерской команды | 1d | 2025-10-24 | 2025-10-29 | 31SS | 1.75d | Гибкий график волонтера | Руководитель проекта; Аренда помещения [0.1%]; Канцелярский набор (бумага, 2 ручки) [1 шт.]; Коммунальные услуги [0.1%]; Лицензии на ПО; Рабочая станция [0.1%]; Серверы для приложения и базы данных | 8h |
| 33 | 8.3 | Формальное закрытие проекта создания АСОСЗ ПСО и передача документации | 1d | 2025-10-30 | 2025-10-31 | 32, 31 | 0d |  | Бизнес-аналитик; Руководитель проекта; Аренда помещения [0.1%]; Канцелярский набор (бумага, 2 ручки) [1 шт.]; Коммунальные услуги [0.1%]; Лицензии на ПО; Рабочая станция [0.1%]; Серверы для приложения и базы данных | 16h |
