# ТЭО

Schedule from MS Project, 2025-01-09 to 2026-09-10, costs in ₽.

## Calendars

- Стандартный: Mon-Fri 09:00-13:00, 14:00-18:00; Sat-Sun off. Exceptions (off unless hours are given): 2025-05-01 to 2025-05-02 (Майские праздники), 2025-05-09 (День победы).

## Resources

| Resource | Rate |
| --- | --- |
| Руководитель проекта | 900 |
| Бизнес-аналитик | 700 |
| Архитектор данных | 500 |
| Инженер-программист | 915 |
| Администратор баз данных | 400 |
| Тестировщик | 625 |
| UX/UI-дизайнер | 600 |
| Специалист по внедрению | 300 |
| Ментор | 300 |
| Специалист по информационной безопасности | 1070 |
| Специалист по поддержке | 650 |

## Schedule

| ID | WBS | Task | Duration | Start | Finish | Predecessors | Total slack | Resources | Work | Cost | Название документа |
| --- | --- | --- | --- | --- | --- | --- | --- | --- | --- | --- | --- |
| 1 | 1 | **Подготовка и анализ документации** | 38d | 2025-01-09 | 2025-03-03 |  | 0d |  | 640h | 494,480 |  |
| 2 | 1.1 | Анализ потребностей бизнеса | 14d | 2025-01-09 | 2025-01-28 |  | 0d | Руководитель проекта; Бизнес-аналитик | 224h | 179,200 | Отчет по анализу требований |
| 3 | 1.2 | Сбор и анализ требований | 14d | 2025-01-29 | 2025-02-17 | 2 | 0d | Архитектор данных; Руководитель проекта; Инженер-программист | 336h | 259,280 | Документ с требованиями |
| 4 | 1.3 | Разработка проектного плана | 10d | 2025-02-18 | 2025-03-03 | 3 | 0d | Бизнес-аналитик | 80h | 56,000 | Проектный план |
| 5 | 2 | Разработка технического задания | 11d | 2025-03-04 | 2025-03-18 | 4 | 0d | Бизнес-аналитик; Архитектор данных; Руководитель проекта | 264h | 184,800 | Техническое задание |
| 6 | 3 | **Разработка архитектуры и проектирование интерфейсов** | 39d | 2025-03-19 | 2025-05-15 |  | 0d |  | 512h | 316,000 |  |
| 7 | 3.1 | Проектирование хранилища данных | 14d | 2025-03-19 | 2025-04-07 | 5 | 0d | Архитектор данных | 112h | 56,000 | Схема данных |
| 8 | 3.2 | Проектирование пользовательского интерфейса (UI/UX) | 25d | 2025-04-08 | 2025-05-15 | 7 | 0d | Бизнес-аналитик; UX/UI-дизайнер | 400h | 260,000 | Техническое задание |
| 9 | 4 | Настройка среды разработки и тестирования | 5d | 2025-05-16 | 2025-05-22 | 8 | 0d | Инженер-программист | 40h | 36,600 | Руководство по настройке среды разработки и тестирования |
| 10 | 5 | **Разработка функционала** | 60d | 2025-05-23 | 2025-08-14 |  | 0d |  | 480h | 439,200 |  |
| 11 | 5.1 | Разработка хранилища данных | 30d | 2025-05-23 | 2025-07-03 | 9 | 0d | Инженер-программист | 240h | 219,600 | Техническое описание функционала ХД |
| 12 | 5.2 | Разработка BI-системы | 30d | 2025-07-04 | 2025-08-14 | 11 | 0d | Инженер-программист | 240h | 219,600 | Техническое описание BI-системы |
| 13 | 6 | Интеграция с существующими ИТ-системами | 10d | 2025-08-15 | 2025-08-28 | 12 | 0d | Руководитель проекта; Инженер-программист | 160h | 145,200 | Отчет об интеграции |
| 14 | 7 | Обеспечение информационной безопасности | 10d | 2025-08-29 | 2025-09-11 | 13 | 0d | Специалист по информационной безопасности | 80h | 85,600 | Документ об информационной безопасности |
| 15 | 8 | **Тестирование и исправление ошибок** | 35d | 2025-09-12 | 2025-10-30 |  | 0d |  | 320h | 211,600 |  |
| 16 | 8.1 | Первичное тестирование | 10d | 2025-09-12 | 2025-09-25 | 14 | 0d | Тестировщик | 80h | 50,000 | Отчет о тестировании |
| 17 | 8.2 | Исправление выявленных ошибок | 5d | 2025-09-26 | 2025-10-02 | 16 | 0d | Инженер-программист; Тестировщик | 80h | 61,600 | Документ по исправлению ошибок |
| 18 | 8.3 | Пользовательское тестирование | 20d | 2025-10-03 | 2025-10-30 | 17 | 0d | Тестировщик | 160h | 100,000 | Отчет о тестировании |
| 19 | 9 | Обучение персонала | 10d | 2025-10-31 | 2025-11-13 | 18 | 0d | Ментор | 80h | 24,000 | Обучающие материалы |
| 20 | 10 | Внедрение системы | 5d | 2025-11-14 | 2025-11-20 | 19 | 0d | Руководитель проекта; Специалист по внедрению | 80h | 48,000 | Руководство по внедрению |
| 21 | 11 | Проверка производительности и мониторинг | 30d | 2025-11-21 | 2026-01-01 | 20 | 0d | Руководитель проекта; Инженер-программист | 480h | 435,600 | Отчет о результатах мониторинга |
| 22 | 12 | Обслуживание и поддержка системы | 180d | 2026-01-02 | 2026-09-10 | 21 | 0d | Инженер-программист; Специалист по поддержке | 2880h | 2,253,600 | Руководство по обслуживанию и поддержки системы |
